# Project-Current

Schedule from MS Project, 2010-09-24 to 2011-09-15, A marks actual dates.

## Calendars

- Standard: Mon-Fri 08:00-12:00, 13:00-17:00; Sat-Sun off.

## Resources

| Resource |
| --- |
| Mike Peter |
| Ken Levine |
| Chris Duffy |
| Sean Williams |
| Programmer 2 |
| Nadia Boumaza |
| Phil McKenzie |
| Steve Francis |
| Beth Giurelli |
| Michael Peter |
| V |

## Schedule

| ID | WBS | Task | Type | Duration | Start | Finish | Predecessors | Complete | Remaining | Total slack | Constraint | Resources | Work | Actual work |
| --- | --- | --- | --- | --- | --- | --- | --- | --- | --- | --- | --- | --- | --- | --- |
| 1 | 1 | **KEY DATES** |  | 239d | 2010-10-18 A | 2011-09-15 |  |  | 239d | 0d |  |  |  |  |
| 2 | 1.1 | Project Start Date | milestone | 0d | 2010-10-18 A | 2010-10-18 A |  | 100% |  |  | start no earlier than 2010-10-18 |  |  |  |
| 3 | 1.2 | Software Requirements Document (SRD) | milestone | 0d | 2011-05-19 | 2011-05-19 | 104 |  |  | 85.15d |  |  |  |  |
| 4 | 1.3 | Requirements and Design Complete | milestone | 0d | 2011-05-19 | 2011-05-19 | 43 |  |  | 85.15d |  |  |  |  |
| 5 | 1.4 | Code and Test Complete | milestone | 0d | 2011-08-31 | 2011-08-31 | 284, 270 |  |  | 11.78d |  |  |  |  |
| 6 | 1.5 | Final Review | milestone | 0d | 2011-09-01 | 2011-09-01 |  |  |  | 0d | start no earlier than 2011-09-01 |  |  |  |
| 7 | 1.6 | Final Report Complete | milestone | 0d | 2011-09-15 | 2011-09-15 | 38 |  |  | 0d |  |  |  |  |
| 9 | 2 | **Monthly Meeting** |  | 228.25d | 2010-10-18 A | 2011-09-01 |  | 45% | 124.5d | 10.75d |  |  | 22h | 10h |
| 10 | 2.1 | Monthly Meeting 1 |  | 2h | 2010-10-18 A | 2010-10-18 A |  | 100% |  |  | start no earlier than 2010-10-18 |  | 2h | 2h |
| 11 | 2.2 | Monthly Meeting 2 |  | 2h | 2010-11-04 A | 2010-11-04 A |  | 100% |  |  | start no earlier than 2010-11-04 |  | 2h | 2h |
| 12 | 2.3 | Monthly Meeting 3 |  | 2h | 2010-12-09 A | 2010-12-09 A |  | 100% |  |  | start no earlier than 2010-12-09 |  | 2h | 2h |
| 13 | 2.4 | Monthly Meeting 4 |  | 2h | 2011-02-03 A | 2011-02-03 A |  | 100% |  |  | start no earlier than 2011-02-03 |  | 2h | 2h |
| 14 | 2.5 | Monthly Meeting 5 |  | 2h | 2011-03-07 A | 2011-03-07 A |  | 100% |  |  | start no earlier than 2011-03-07 |  | 2h | 2h |
| 15 | 2.6 | Monthly Meeting 6 |  | 2h | 2011-04-07 | 2011-04-07 |  |  |  | 115.75d | start no earlier than 2011-04-07 |  | 2h |  |
| 16 | 2.7 | Monthly Meeting 7 |  | 2h | 2011-05-05 | 2011-05-05 |  |  |  | 95.75d | start no earlier than 2011-05-05 |  | 2h |  |
| 17 | 2.8 | Monthly Meeting 8 |  | 2h | 2011-06-02 | 2011-06-02 |  |  |  | 75.75d | start no earlier than 2011-06-02 |  | 2h |  |
| 18 | 2.9 | Monthly Meeting 9 |  | 2h | 2011-07-07 | 2011-07-07 |  |  |  | 50.75d | start no earlier than 2011-07-07 |  | 2h |  |
| 19 | 2.10 | Monthly Meeting 10 |  | 2h | 2011-08-04 | 2011-08-04 |  |  |  | 30.75d | start no earlier than 2011-08-04 |  | 2h |  |
| 20 | 2.11 | Monthly Meeting 11 |  | 2h | 2011-09-01 | 2011-09-01 |  |  |  | 10.75d | start no earlier than 2011-09-01 |  | 2h |  |
| 22 | 3 | **IWM TO12 Project Tasks** |  | 255d | 2010-09-24 A | 2011-09-15 |  | 66% | 87.85d | 0d |  |  | 8699.31h | 5296.25h |
| 23 | 3.1 | **Task 1 - Project Management** |  | 255d | 2010-09-24 A | 2011-09-15 |  | 66% | 86.87d | 0d |  |  | 962.55h | 657.83h |
| 24 | 3.1.1 | Sprint Project Management |  | 235d | 2010-10-18 A | 2011-09-15 |  | 60% | 94d | 0d |  | Mike Peter [20%] | 365.7h | 215.3h |
| 25 | 3.1.2 | **Technical Support** |  | 255d | 2010-09-24 A | 2011-09-15 |  | 60% | 102d | 0d |  |  | 296.78h | 176.06h |
| 26 | 3.1.2.1 | Developer Support |  | 251d | 2010-09-24 A | 2011-09-15 | 2 | 60% | 100.4d | 0d |  | Chris Duffy [5%]; Sean Williams [5%] | 100.78h | 60.62h |
| 27 | 3.1.2.2 | Admin/Test Support |  | 253d | 2010-09-24 A | 2011-09-15 | 2 | 60% | 101.2d | 1d |  | Chris Duffy [5%]; Sean Williams [5%] | 196h | 115.44h |

| ID | WBS | Task | Type | Duration | Start | Finish | Predecessors | Complete | Remaining | Total slack | Free slack | Resources | Work | Actual work |
| --- | --- | --- | --- | --- | --- | --- | --- | --- | --- | --- | --- | --- | --- | --- |
| 28 | 3.1.3 | **Project Management Plan (PMP)** |  | 75d | 2010-09-24 A | 2011-01-06 A |  | 100% |  |  |  |  | 162.47h | 162.47h |
| 29 | 3.1.3.1 | Update & Revise Detailed PMP |  | 45d | 2010-09-24 A | 2010-11-25 A | 2 | 100% |  |  |  | Chris Duffy [20%]; Ken Levine [20%] | 142.47h | 142.47h |
| 30 | 3.1.3.2 | Sonalysts Review of PMP |  | 10d | 2010-11-26 A | 2010-12-09 A | 29 | 100% |  |  |  |  |  |  |
| 31 | 3.1.3.3 | MLC Updates to PMP |  | 20d | 2010-12-10 A | 2011-01-06 A | 30 | 100% |  |  |  | Mike Peter [12.5%] | 20h | 20h |
| 32 | 3.1.3.4 | Deliverable: Submit Final Project Management Plan | milestone | 0d | 2011-01-06 A | 2011-01-06 A | 31 | 100% |  |  |  |  |  |  |
| 33 | 3.1.4 | **Project Work Plan (PWP)** |  | 75d | 2010-09-24 A | 2011-01-06 A |  | 100% |  |  |  |  | 104h | 104h |
| 34 | 3.1.4.1 | Develop & Revise PWP |  | 45d | 2010-09-24 A | 2010-11-25 A | 2 | 100% |  |  |  | Mike Peter [20%] | 72h | 72h |
| 35 | 3.1.4.2 | Sonalysts Review of PWP |  | 10d | 2010-11-26 A | 2010-12-09 A | 34 | 100% |  |  |  |  |  |  |
| 36 | 3.1.4.3 | MLC Updates to PWP |  | 20d | 2010-12-10 A | 2011-01-06 A | 35 | 100% |  |  |  | Mike Peter [20%] | 32h | 32h |
| 37 | 3.1.4.4 | Deliverable: Submit Project Work Plan | milestone | 0d | 2011-01-06 A | 2011-01-06 A | 36 | 100% |  |  |  |  |  |  |
| 38 | 3.1.5 | **Project Final Report** |  | 11d | 2011-09-01 | 2011-09-15 |  |  |  | 0d |  |  | 33.6h |  |
| 39 | 3.1.5.1 | Develop Project Final Report |  | 5d | 2011-09-01 | 2011-09-07 | 6 |  |  | 0d |  | Mike Peter [70%] | 28h |  |
| 40 | 3.1.5.2 | Sonalysts Review of Project Final Report |  | 5d | 2011-09-08 | 2011-09-14 | 39 |  |  | 0d |  |  |  |  |
| 41 | 3.1.5.3 | MLC Updates to Project Final Report |  | 1d | 2011-09-15 | 2011-09-15 | 40 |  |  | 0d |  | Mike Peter [70%] | 5.6h |  |
| 42 | 3.1.5.4 | Deliverable: Submit Project Final Report | milestone | 0d | 2011-09-15 | 2011-09-15 | 41 |  |  | 0d |  |  |  |  |
| 43 | 3.2 | **Task 2 - System Analysis** |  | 169.85d | 2010-09-24 A | 2011-05-19 |  | 86% | 23d | 85.15d | 0d |  | 1471.5h | 1314.7h |
| 44 | 3.2.1 | **Model Change Analysis Modeling** |  | 23d | 2010-09-24 A | 2010-10-26 A |  | 100% |  |  |  |  | 111.2h | 111.2h |
| 45 | 3.2.1.1 | Model Change Analysis |  | 20d | 2010-09-24 A | 2010-10-21 A | 2 | 100% |  |  |  | Mike Peter [60%] | 96h | 96h |
| 46 | 3.2.1.2 | Review: Model Change Modeling Pkg |  | 1d | 2010-10-22 A | 2010-10-22 A | 45 | 100% |  |  |  | Ken Levine [10%]; Mike Peter [60%] | 5.6h | 5.6h |
| 47 | 3.2.1.3 | Model Change Modeling Pkg - modifications from review |  | 2d | 2010-10-25 A | 2010-10-26 A | 46 | 100% |  |  |  | Mike Peter [60%] | 9.6h | 9.6h |
| 48 | 3.2.1.4 | Internal Deliverable: Draft Model Change Use Case Package | milestone | 0d | 2010-10-26 A | 2010-10-26 A | 47 | 100% |  |  |  |  |  |  |
| 49 | 3.2.2 | **Scheduler Enhancement Analysis Modeling** |  | 74d | 2010-09-24 A | 2011-01-05 A |  | 100% |  |  |  |  | 535.26h | 535.26h |
| 50 | 3.2.2.1 | **Test Lab Analysis Models** |  | 43d | 2010-09-24 A | 2010-11-23 A |  | 100% |  |  |  |  | 266.26h | 266.26h |
| 51 | 3.2.2.1.1 | Test Lab Analysis 1 |  | 20d | 2010-09-24 A | 2010-10-21 A | 2 | 100% |  |  |  | Ken Levine [80%] | 126.4h | 126.4h |
| 52 | 3.2.2.1.2 | Review: Test Lab Analysis 1 |  | 1d | 2010-10-22 A | 2010-10-22 A | 51 | 100% |  |  |  | Ken Levine [10%]; Chris Duffy [20%]; Mike Peter [20%] | 3.06h | 3.06h |
| 53 | 3.2.2.1.3 | Test Lab Analysis 2 |  | 20d | 2010-10-25 A | 2010-11-19 A | 52 | 100% |  |  |  | Ken Levine [80%] | 128h | 128h |
| 54 | 3.2.2.1.4 | Review: Test Lab Analysis 2 |  | 1d | 2010-11-22 A | 2010-11-22 A | 53 | 100% |  |  |  | Chris Duffy [20%]; Ken Levine [70%]; Mike Peter [20%] | 3.2h | 3.2h |
| 55 | 3.2.2.1.5 | Scheduler Modeling Pkg - Test Lab analysis review mods |  | 1d | 2010-11-23 A | 2010-11-23 A | 54 | 100% |  |  |  | Ken Levine [70%] | 5.6h | 5.6h |

| ID | WBS | Task | Type | Duration | Start | Finish | Predecessors | Complete | Resources | Work | Actual work |
| --- | --- | --- | --- | --- | --- | --- | --- | --- | --- | --- | --- |
| 56 | 3.2.2.2 | **Scheduler Interface Analysis Models** |  | 17.29d | 2010-12-13 A | 2011-01-05 A |  | 100% |  | 93.2h | 93.2h |
| 57 | 3.2.2.2.1 | Scheduler Interface - Data Processing Analysis |  | 14.29d | 2010-12-13 A | 2010-12-31 A | 113 | 100% | Mike Peter [75%] | 76.6h | 76.6h |
| 58 | 3.2.2.2.2 | Review: Scheduler Interface Analysis Models |  | 1d | 2010-12-31 A | 2011-01-03 A | 57 | 100% | Chris Duffy [20%]; Ken Levine [10%]; Mike Peter [70%] | 7.8h | 7.8h |
| 59 | 3.2.2.2.3 | Scheduler Modeling Pkg - Scheduler Interface analysis review mods |  | 2d | 2011-01-03 A | 2011-01-05 A | 58 | 100% | Mike Peter [60%] | 8.8h | 8.8h |
| 60 | 3.2.2.3 | **Scheduler Core Analysis Models** |  | 24d | 2010-12-03 A | 2011-01-05 A |  | 100% |  | 175.8h | 175.8h |
| 61 | 3.2.2.3.1 | Scheduler Core Analysis Iteration 1 |  | 10d | 2010-12-03 A | 2010-12-16 A | 55 | 100% | Ken Levine | 76h | 76h |
| 62 | 3.2.2.3.2 | Review: Scheduler Core Analysis Iteration 1 |  | 2d | 2010-12-17 A | 2010-12-20 A | 61 | 100% | Chris Duffy [20%]; Ken Levine; Mike Peter [20%] | 17h | 17h |
| 63 | 3.2.2.3.3 | Scheduler Core Analysis Iteration 2 |  | 10d | 2010-12-21 A | 2011-01-03 A | 62 | 100% | Ken Levine | 74.4h | 74.4h |
| 64 | 3.2.2.3.4 | Review: Scheduler Core Analysis Iteration 2 |  | 2d | 2011-01-04 A | 2011-01-05 A | 63 | 100% | Chris Duffy [20%]; Ken Levine; Mike Peter [12.5%] | 8.4h | 8.4h |
| 65 | 3.2.2.4 | Internal Deliverable: Draft Scheduler Modeling Package | milestone | 0d | 2011-01-05 A | 2011-01-05 A | 64 | 100% |  |  |  |
| 66 | 3.2.3 | **Marines Maintenance Process Draft Requirements** |  | 41.5d | 2011-01-05 A | 2011-03-03 A |  | 100% |  | 314.64h | 314.64h |
| 67 | 3.2.3.1 | High-Level Maintenance Process |  | 12d | 2011-01-05 A | 2011-01-21 A | 56 | 100% | Mike Peter [20%] | 19.2h | 19.2h |
| 68 | 3.2.3.2 | Review: High-Level Maintenance Process 1 |  | 0.5d | 2011-01-21 A | 2011-01-21 A | 67 | 100% | Chris Duffy; Ken Levine; Mike Peter | 9.04h | 9.04h |
| 69 | 3.2.3.3 | Review: High-Level Maintenance Process 2 |  | 1d | 2011-01-21 A | 2011-01-24 A | 68 | 100% | Phil McKenzie; Steve Francis; Mike Peter [30%] | 18.4h | 18.4h |
| 70 | 3.2.3.4 | Revise: High-Level Maintenance Process |  | 3d | 2011-01-24 A | 2011-01-27 A | 69 | 100% | Mike Peter [20%] | 4.8h | 4.8h |
| 71 | 3.2.3.5 | **Maintenance Process Modeling** |  | 18d | 2011-01-27 A | 2011-02-22 A |  | 100% |  | 63.2h | 63.2h |
| 72 | 3.2.3.5.1 | Shop Administration Process |  | 5d | 2011-01-27 A | 2011-02-03 A | 70 | 100% | Mike Peter [30%] | 12h | 12h |
| 73 | 3.2.3.5.2 | ERO Process |  | 3d | 2011-02-03 A | 2011-02-08 A | 72 | 100% | Mike Peter [30%] | 7.2h | 7.2h |
| 74 | 3.2.3.5.3 | PMCS Planning Process |  | 2d | 2011-02-08 A | 2011-02-10 A | 73 | 100% | Mike Peter [30%] | 4.8h | 4.8h |
| 75 | 3.2.3.5.4 | IWM Optimization Areas |  | 5d | 2011-02-10 A | 2011-02-17 A | 74 | 100% | Mike Peter [30%] | 12h | 12h |
| 76 | 3.2.3.5.5 | Review: Maintenance Process Models |  | 1d | 2011-02-17 A | 2011-02-18 A | 75 | 100% | Phil McKenzie [50%]; Mike Peter [30%]; Steve Francis; Beth Giurelli | 22.4h | 22.4h |
| 77 | 3.2.3.5.6 | Revise: Maintenance Process Models |  | 2d | 2011-02-18 A | 2011-02-22 A | 76 | 100% | Mike Peter [30%] | 4.8h | 4.8h |
| 78 | 3.2.3.6 | **Maintenance Work Analysis** |  | 25d | 2011-01-27 A | 2011-03-03 A |  | 100% |  | 200h | 200h |
| 79 | 3.2.3.6.1 | ERO work analysis |  | 20d | 2011-01-27 A | 2011-02-24 A | 70 | 100% | Steve Francis [50%] | 80h | 80h |
| 80 | 3.2.3.6.2 | Maintenance process analysis |  | 20d | 2011-01-27 A | 2011-02-24 A | 70 | 100% | Steve Francis [50%] | 80h | 80h |
| 81 | 3.2.3.6.3 | Task Analysis slides |  | 5d | 2011-02-24 A | 2011-03-03 A | 79, 80 | 100% | Steve Francis | 40h | 40h |
| 82 | 3.2.3.7 | Internal Deliverable: Draft MRAP Requirements Package | milestone | 0d | 2011-03-03 A | 2011-03-03 A | 71, 78 | 100% |  |  |  |

| ID | WBS | Task | Type | Duration | Start | Finish | Predecessors | Complete | Remaining | Total slack | Free slack | Constraint | Resources | Work | Actual work |
| --- | --- | --- | --- | --- | --- | --- | --- | --- | --- | --- | --- | --- | --- | --- | --- |
| 83 | 3.2.4 | **Marine-Tailored UI Requirements** |  | 20.06d | 2011-03-03 A | 2011-03-31 A |  | 100% |  |  |  |  |  | 318.4h | 318.4h |
| 84 | 3.2.4.1 | MUI: Planning Tasks |  | 2d | 2011-03-03 A | 2011-03-07 A | 66 | 100% |  |  |  |  | Steve Francis; Phil McKenzie [20%] | 19.2h | 19.2h |
| 85 | 3.2.4.2 | MUI: Planning Scenarios/Screen mockups |  | 7d | 2011-03-07 A | 2011-03-16 A | 84 | 100% |  |  |  |  | Steve Francis | 56h | 56h |
| 86 | 3.2.4.3 | MUI: Planning Use Cases |  | 8d | 2011-03-03 A | 2011-03-15 A | 66 | 100% |  |  |  |  | Mike Peter [20%] | 12.8h | 12.8h |
| 87 | 3.2.4.4 | Review: MUI: Planning |  | 1d | 2011-03-15 A | 2011-03-16 A | 86 | 100% |  |  |  |  | Chris Duffy [20%]; Sean Williams [20%]; Mike Peter [10%]; Steve Francis; Phil McKenzie | 20h | 20h |
| 88 | 3.2.4.5 | Revise: MUI: Planning |  | 1d | 2011-03-16 A | 2011-03-17 A | 87 | 100% |  |  |  |  | Steve Francis; Phil McKenzie [20%] | 9.6h | 9.6h |
| 89 | 3.2.4.6 | MUI: Scheduling Tasks |  | 2d | 2011-03-17 A | 2011-03-21 A | 88 | 100% |  |  |  |  | Steve Francis; Phil McKenzie [20%] | 19.2h | 19.2h |
| 90 | 3.2.4.7 | MUI: Scheduling Scenarios/Screen mockups |  | 5d | 2011-03-21 A | 2011-03-28 A | 89 | 100% |  |  |  |  | Steve Francis | 40h | 40h |
| 91 | 3.2.4.8 | MUI: Scheduling Use Cases |  | 5d | 2011-03-17 A | 2011-03-24 A | 88 | 100% |  |  |  |  | Mike Peter [30%] | 12h | 12h |
| 92 | 3.2.4.9 | Review: MUI: Scheduling |  | 1d | 2011-03-24 A | 2011-03-25 A | 91 | 100% |  |  |  |  | Chris Duffy [20%]; Sean Williams [20%]; Mike Peter [10%]; Steve Francis; Phil McKenzie | 20h | 20h |
| 93 | 3.2.4.10 | Revise: MUI: Scheduling |  | 1d | 2011-03-25 A | 2011-03-28 A | 92 | 100% |  |  |  |  | Steve Francis; Phil McKenzie [20%] | 9.6h | 9.6h |
| 94 | 3.2.4.11 | MUI: Scenarios refinement |  | 2.19d | 2011-03-28 A | 2011-03-30 A | 93 | 100% |  |  |  |  | Steve Francis; Beth Giurelli; Chris Duffy; Mike Peter | 70h | 70h |
| 95 | 3.2.4.12 | MUI: SME interview |  | 0.87d | 2011-03-30 A | 2011-03-31 A | 94 | 100% |  |  |  |  | Mike Peter; Steve Francis; Beth Giurelli; Chris Duffy; Phil McKenzie | 30h | 30h |
| 96 | 3.2.4.13 | Internal Deliverable: Final Marine-Tailored UI Requirements Package | milestone | 0d | 2011-03-31 A | 2011-03-31 A | 95 | 100% |  |  |  |  |  |  |  |
| 97 | 3.2.5 | **Web Services Analysis Modeling** |  | 3d | 2011-03-17 A | 2011-03-22 A |  | 100% |  |  |  |  |  | 9.6h | 9.6h |
| 98 | 3.2.5.1 | Domain data web services analysis models |  | 3d | 2011-03-17 A | 2011-03-22 A | 88, 66 | 100% |  |  |  |  | Nadia Boumaza [10%]; Michael Peter [30%] | 9.6h | 9.6h |
| 99 | 3.2.5.2 | Internal Deliverable: Draft Web Services Modeling Package | milestone | 0d | 2011-03-22 A | 2011-03-22 A | 98 | 100% |  |  |  |  |  |  |  |
| 100 | 3.2.6 | **Reports Requirements** |  | 5d | 2011-03-16 A | 2011-03-22 |  | 80% | 1d | 44.03d | 0d |  |  | 28.51h | 25.6h |
| 101 | 3.2.6.1 | Report Framework Matrix |  | 4d | 2011-03-16 A | 2011-03-21 A | 238 | 100% |  |  |  |  | Chris Duffy [80%] | 25.6h | 25.6h |
| 102 | 3.2.6.2 | Supervisor Reports Requirements |  | 1d | 2011-03-22 | 2011-03-22 | 101, 237 |  |  | 44.03d | 0d | start no earlier than 2011-03-09 | Chris Duffy [43.8%] | 2.91h |  |
| 103 | 3.2.6.3 | Internal Deliverable: Final Reports Requirements Package | milestone | 0d | 2011-03-22 | 2011-03-22 | 102 |  |  | 44.03d |  |  |  |  |  |
| 104 | 3.2.7 | **Software Requirements Documentation** |  | 35d | 2011-03-31 | 2011-05-19 |  |  |  | 85.15d | 0d |  |  | 153.88h |  |
| 105 | 3.2.7.1 | Develop Software Requirements Document |  | 10d | 2011-03-31 | 2011-04-14 | 44, 49, 83, 97, 100 |  |  | 85.15d | 0d |  | Mike Peter [30%]; Chris Duffy [27.6%]; Nadia Boumaza [50%] | 47.35h |  |
| 106 | 3.2.7.2 | Sonalysts Review of Software Requirements Document |  | 10d | 2011-04-14 | 2011-04-28 | 105 |  |  | 85.15d | 0d |  | Beth Giurelli | 80h |  |
| 107 | 3.2.7.3 | MLC SRD Updates from Sonalysts Review |  | 3d | 2011-04-28 | 2011-05-03 | 106 |  |  | 85.15d | 0d |  | Mike Peter [20%]; Chris Duffy [27.6%]; Sean Williams [20%] | 13.57h |  |
| 108 | 3.2.7.4 | Deliverable: Submit Final Software Requirements Document | milestone | 0d | 2011-05-03 | 2011-05-03 | 107 |  |  | 85.15d | 0d |  |  |  |  |
| 109 | 3.2.7.5 | MRAP Review/Approval of SRD |  | 10d | 2011-05-03 | 2011-05-17 | 108 |  |  | 85.15d | 0d |  | Phil McKenzie [5%] | 4h |  |
| 110 | 3.2.7.6 | MLC SRD Updates from Govt Review |  | 2d | 2011-05-17 | 2011-05-19 | 109 |  |  | 85.15d | 0d |  | Mike Peter [20%]; Chris Duffy [27.6%]; Sean Williams [20%] | 8.97h |  |
| 111 | 3.2.7.7 | Sign-off: Software Requirements Document | milestone | 0d | 2011-05-19 | 2011-05-19 | 110 |  |  | 85.15d |  |  |  |  |  |

| ID | WBS | Task | Type | Duration | Start | Finish | Predecessors | Complete | Remaining | Total slack | Resources | Work | Actual work |
| --- | --- | --- | --- | --- | --- | --- | --- | --- | --- | --- | --- | --- | --- |
| 112 | 3.3 | **Task 3 - System Design** |  | 151.85d | 2010-10-27 A | 2011-05-26 |  | 72% | 42.24d | 80.15d |  | 1339.37h | 933.03h |
| 113 | 3.3.1 | **Model Change Design Modeling** |  | 35d | 2010-10-27 A | 2010-12-14 A |  | 100% |  |  |  | 341.6h | 341.6h |
| 114 | 3.3.1.1 | Model Change High-Level Design |  | 10d | 2010-10-27 A | 2010-11-09 A | 44 | 100% |  |  | Mike Peter [60%] | 48h | 48h |
| 115 | 3.3.1.2 | Review: Model Change Design |  | 2d | 2010-11-10 A | 2010-11-11 A | 114 | 100% |  |  | Chris Duffy [70%]; Ken Levine [10%]; Mike Peter [80%] | 25.6h | 25.6h |
| 116 | 3.3.1.3 | Revise: Model Change Design |  | 3d | 2010-11-12 A | 2010-11-16 A | 115 | 100% |  |  | Mike Peter [50%] | 12h | 12h |
| 117 | 3.3.1.4 | Internal Deliverable: Draft 2 Model Change Use Case Package | milestone | 0d | 2010-11-16 A | 2010-11-16 A | 116 | 100% |  |  |  |  |  |
| 118 | 3.3.1.5 | Model Change Detailed Design |  | 10d | 2010-11-17 A | 2010-11-30 A | 117 | 100% |  |  | Nadia Boumaza; Mike Peter [50%] | 120h | 120h |
| 119 | 3.3.1.6 | Review: Model Change Detailed Design |  | 5d | 2010-12-01 A | 2010-12-07 A | 118 | 100% |  |  | Chris Duffy [50%]; Ken Levine [10%]; Mike Peter [80%]; Nadia Boumaza | 96h | 96h |
| 120 | 3.3.1.7 | Revise: Model Change Detailed Design |  | 5d | 2010-12-08 A | 2010-12-14 A | 119 | 100% |  |  | Nadia Boumaza | 40h | 40h |
| 121 | 3.3.1.8 | Internal Deliverable: Final Model Change Use Case Package | milestone | 0d | 2010-12-14 A | 2010-12-14 A | 120 | 100% |  |  |  |  |  |
| 122 | 3.3.2 | **Scheduler Enhancement Design Modeling** |  | 54.71d | 2011-01-05 A | 2011-03-22 A |  | 100% |  |  |  | 551.43h | 551.43h |
| 123 | 3.3.2.1 | **Test Lab Design Models** |  | 10.71d | 2011-03-08 A | 2011-03-22 A |  | 100% |  |  |  | 52.8h | 52.8h |
| 124 | 3.3.2.1.1 | Test Lab framework design |  | 7.71d | 2011-03-08 A | 2011-03-17 A | 126 | 100% |  |  | Mike Peter [70%] | 42h | 42h |
| 125 | 3.3.2.1.2 | Scheduler Run Results design |  | 3d | 2011-03-18 A | 2011-03-22 A | 124 | 100% |  |  | Ken Levine [45%] | 10.8h | 10.8h |
| 126 | 3.3.2.2 | **Scheduler Interface Design Models** |  | 44d | 2011-01-05 A | 2011-03-08 A |  | 100% |  |  |  | 178.22h | 178.22h |
| 127 | 3.3.2.2.1 | Scheduler Interface Design 1 |  | 20d | 2011-01-05 A | 2011-02-02 A | 56 | 100% |  |  | Mike Peter [50%] | 77.6h | 77.6h |
| 128 | 3.3.2.2.2 | Review: Scheduler Interface Design 1 |  | 1d | 2011-02-02 A | 2011-02-03 A | 127 | 100% |  |  | Chris Duffy [27.6%]; Ken Levine [10%]; Mike Peter [55.2%] | 6.8h | 6.8h |
| 129 | 3.3.2.2.3 | Scheduler Interface Design 2 |  | 20d | 2011-02-03 A | 2011-03-03 A | 128 | 100% |  |  | Mike Peter [50%] | 80h | 80h |
| 130 | 3.3.2.2.4 | Review: Scheduler Interface Design 2 |  | 1d | 2011-03-03 A | 2011-03-04 A | 129 | 100% |  |  | Ken Levine [10%]; Mike Peter [55%] | 5.2h | 5.2h |
| 131 | 3.3.2.2.5 | Scheduler Interface Modeling Pkg - review mods |  | 2d | 2011-03-04 A | 2011-03-08 A | 130 | 100% |  |  | Mike Peter [60%] | 8.62h | 8.62h |
| 132 | 3.3.2.3 | **Scheduler Core Design Models** |  | 48d | 2011-01-06 A | 2011-03-14 A |  | 100% |  |  |  | 320.4h | 320.4h |
| 133 | 3.3.2.3.1 | Scheduler Core Design Iteration 1 |  | 17d | 2011-01-06 A | 2011-01-28 A | 60 | 100% |  |  | Ken Levine [80%] | 108.8h | 108.8h |
| 134 | 3.3.2.3.2 | Review: Scheduler Core Design Iteration 1 |  | 2d | 2011-01-31 A | 2011-02-01 A | 133 | 100% |  |  | Chris Duffy [20%]; Ken Levine [75%]; Mike Peter [20%] | 17h | 17h |
| 135 | 3.3.2.3.3 | Scheduler Core Design Iteration 2 |  | 12.5d | 2011-02-02 A | 2011-02-18 A | 134 | 100% |  |  | Ken Levine [80%] | 80h | 80h |
| 136 | 3.3.2.3.4 | Review: Scheduler Core Design Iteration 2 |  | 2d | 2011-02-18 A | 2011-02-22 A | 135 | 100% |  |  | Chris Duffy [20%]; Ken Levine; Mike Peter [20%] | 21.8h | 21.8h |
| 137 | 3.3.2.3.5 | Scheduler Core Design Iteration 3 |  | 12.5d | 2011-02-22 A | 2011-03-10 A | 136 | 100% |  |  | Ken Levine [80%] | 80h | 80h |
| 138 | 3.3.2.3.6 | Review: Scheduler Core Design Iteration 3 |  | 2d | 2011-03-11 A | 2011-03-14 A | 137 | 100% |  |  | Ken Levine [80%] | 12.8h | 12.8h |
| 139 | 3.3.2.4 | Internal Deliverable: Final Scheduler Core Modeling Package | milestone | 0d | 2011-03-14 A | 2011-03-14 A | 138 | 100% |  |  |  |  |  |

| ID | WBS | Task | Type | Duration | Start | Finish | Predecessors | Complete | Total slack | Free slack | Resources | Work | Actual work |
| --- | --- | --- | --- | --- | --- | --- | --- | --- | --- | --- | --- | --- | --- |
| 140 | 3.3.3 | **Marine-Tailored UI Design** |  | 22d | 2011-03-31 | 2011-05-02 |  |  | 18.93d | 0d |  | 248h |  |
| 141 | 3.3.3.1 | MUI Design: Planning/Admin Screens |  | 5d | 2011-03-31 | 2011-04-07 | 83 |  | 18.93d | 0d | Steve Francis | 40h |  |
| 142 | 3.3.3.2 | MUI Design: Planning/Admin Business Rules |  | 3d | 2011-04-07 | 2011-04-12 | 141 |  | 18.93d | 0d | Programmer 2 | 24h |  |
| 143 | 3.3.3.3 | Review: MUI Design: Planning/Admin |  | 1d | 2011-04-12 | 2011-04-13 | 142 |  | 18.93d | 0d | Chris Duffy [20%]; Sean Williams [20%]; Mike Peter [10%]; Steve Francis; Phil McKenzie; Beth Giurelli | 28h |  |
| 144 | 3.3.3.4 | Revise: MUI Design: Planning/Admin |  | 2d | 2011-04-13 | 2011-04-15 | 143 |  | 18.93d | 0d | Steve Francis; Programmer 2 | 32h |  |
| 145 | 3.3.3.5 | MUI Design: Scheduling/Admin Screens |  | 5d | 2011-04-15 | 2011-04-22 | 144 |  | 18.93d | 0d | Steve Francis | 40h |  |
| 146 | 3.3.3.6 | MUI Design: Scheduling/Admin Business Rules |  | 3d | 2011-04-22 | 2011-04-27 | 145 |  | 18.93d | 0d | Programmer 2 | 24h |  |
| 147 | 3.3.3.7 | Review: MUI Design: Scheduling/Admin |  | 1d | 2011-04-27 | 2011-04-28 | 146 |  | 18.93d | 0d | Chris Duffy [20%]; Sean Williams [20%]; Mike Peter [10%]; Steve Francis; Phil McKenzie; Beth Giurelli | 28h |  |
| 148 | 3.3.3.8 | Revise: MUI Design: Scheduling/Admin |  | 2d | 2011-04-28 | 2011-05-02 | 147 |  | 18.93d | 0d | Steve Francis; Programmer 2 | 32h |  |
| 149 | 3.3.3.9 | Internal Deliverable: Final Marine-Tailored UI Design Package | milestone | 0d | 2011-05-02 | 2011-05-02 | 148 |  | 18.93d |  |  |  |  |
| 150 | 3.3.4 | **Web Services Design Modeling** |  | 5d | 2011-03-22 A | 2011-03-29 A |  | 100% |  |  |  | 40h | 40h |
| 151 | 3.3.4.1 | Domain data web services design models |  | 5d | 2011-03-22 A | 2011-03-29 A | 97 | 100% |  |  | Nadia Boumaza | 40h | 40h |
| 152 | 3.3.4.2 | Internal Deliverable: Final Web Services Modeling Package | milestone | 0d | 2011-03-29 A | 2011-03-29 A | 151 | 100% |  |  |  |  |  |
| 153 | 3.3.5 | **Reports Design** |  | 15d | 2011-03-23 | 2011-04-12 |  |  | 44.03d | 0d |  | 90.71h |  |
| 154 | 3.3.5.1 | Supervisor Reports Design |  | 5d | 2011-03-23 | 2011-03-29 | 100 |  | 44.03d | 0d | Chris Duffy [80%] | 31.78h |  |
| 155 | 3.3.5.2 | Custom Reports Design (5 reports) |  | 8d | 2011-03-30 | 2011-04-08 | 154 |  | 44.03d | 0d | Chris Duffy [80%] | 49.91h |  |
| 156 | 3.3.5.3 | Review: Reports Design Package |  | 1d | 2011-04-11 | 2011-04-11 | 155 |  | 92d | 0d | Chris Duffy [20%]; Sean Williams [20%]; Mike Peter [10%] | 2.62h |  |
| 157 | 3.3.5.4 | Reports Design Pkg - review mods |  | 1d | 2011-04-12 | 2011-04-12 | 156 |  | 92d | 0d | Chris Duffy [80%] | 6.4h |  |
| 158 | 3.3.5.5 | Internal Deliverable: Final Reports Design Package | milestone | 0d | 2011-04-12 | 2011-04-12 | 157 |  | 92d |  |  |  |  |
| 159 | 3.3.6 | **Detailed Design Documentation** |  | 18d | 2011-05-02 | 2011-05-26 |  |  | 80.15d |  |  | 67.63h |  |
| 160 | 3.3.6.1 | Develop Detailed Design Document |  | 10d | 2011-05-02 | 2011-05-16 | 113, 122, 140, 150, 153 |  | 80.15d | 0d | Chris Duffy [30%]; Mike Peter [30%]; Nadia Boumaza [50%] | 52h |  |
| 161 | 3.3.6.2 | Sonalysts Review of Detailed Design Document |  | 5d | 2011-05-16 | 2011-05-23 | 160 |  | 80.15d | 0d |  |  |  |
| 162 | 3.3.6.3 | MLC Updates |  | 3d | 2011-05-23 | 2011-05-26 | 161 |  | 80.15d | 0d | Chris Duffy [30%]; Mike Peter [20%]; Sean Williams [20%] | 15.63h |  |
| 163 | 3.3.6.4 | Deliverable: Submit Detailed Design Document | milestone | 0d | 2011-05-26 | 2011-05-26 | 162 |  | 80.15d |  |  |  |  |

| ID | WBS | Task | Duration | Start | Finish | Predecessors | Complete | Remaining | Total slack | Free slack | Resources | Work | Actual work |
| --- | --- | --- | --- | --- | --- | --- | --- | --- | --- | --- | --- | --- | --- |
| 164 | 3.4 | **Task 4 - System Development and Configuration** | 162d | 2010-12-20 A | 2011-08-02 |  | 39% | 98.76d | 0.78d | 0d |  | 2511.31h | 849.71h |
| 165 | 3.4.1 | **Model Change Development** | 135.33d | 2010-12-20 A | 2011-06-27 |  | 58% | 57.33d | 27.44d |  |  | 942.11h | 630.11h |
| 166 | 3.4.1.1 | Draft complete domain model | 10d | 2010-12-20 A | 2010-12-31 A | 113 | 100% |  |  |  | Nadia Boumaza | 80h | 80h |
| 167 | 3.4.1.2 | Domain model package cleanup | 20d | 2011-01-03 A | 2011-01-28 A | 166 | 100% |  |  |  | Nadia Boumaza; Chris Duffy [5%] | 168h | 168h |
| 168 | 3.4.1.3 | Create v4 Application Build tree | 5d | 2011-01-31 A | 2011-02-04 A | 167 | 100% |  |  |  | Nadia Boumaza | 40h | 40h |
| 169 | 3.4.1.4 | **Persistence/Presentation Layers Update** | 43d | 2011-02-07 A | 2011-04-06 A |  | 100% |  |  |  |  | 342.11h | 342.11h |
| 170 | 3.4.1.4.1 | Update POJOs/CRUD/Schema - Iteration 1 | 10d | 2011-02-07 A | 2011-02-18 A | 168 | 100% |  |  |  | Nadia Boumaza | 80h | 80h |
| 171 | 3.4.1.4.2 | Review: POJOs/CRUD/Schema update - Iteration 1 | 1d | 2011-02-21 A | 2011-02-21 A | 170 | 100% |  |  |  | Nadia Boumaza [38%]; Chris Duffy [38%]; Mike Peter [38%] | 9.12h | 9.12h |
| 172 | 3.4.1.4.3 | Update POJOs/CRUD/Schema - Iteration 2a | 6d | 2011-02-22 A | 2011-03-01 A | 171 | 100% |  |  |  | Nadia Boumaza | 48h | 48h |
| 173 | 3.4.1.4.4 | Build process technology migration | 8d | 2011-03-02 A | 2011-03-11 A | 172 | 100% |  |  |  | Nadia Boumaza | 64h | 64h |
| 174 | 3.4.1.4.5 | Update POJOs/CRUD/Schema - Iteration 2b | 6d | 2011-03-14 A | 2011-03-21 A | 173 | 100% |  |  |  | Nadia Boumaza | 48h | 48h |
| 175 | 3.4.1.4.6 | Review: POJOs/CRUD/Schema update - Iteration 2 | 1d | 2011-03-22 A | 2011-03-22 A | 174 | 100% |  |  |  | Nadia Boumaza [38%]; Chris Duffy [38%]; Mike Peter [38%] | 6.49h | 6.49h |
| 176 | 3.4.1.4.7 | Update POJOs/CRUD/Schema - Iteration 3 | 10d | 2011-03-23 A | 2011-04-05 A | 175 | 100% |  |  |  | Nadia Boumaza | 80h | 80h |
| 177 | 3.4.1.4.8 | Review: POJOs/CRUD/Schema update - Iteration 3 | 1d | 2011-04-06 A | 2011-04-06 A | 176 | 100% |  |  |  | Nadia Boumaza [38%]; Chris Duffy [38%]; Mike Peter [38%] | 6.49h | 6.49h |
| 178 | 3.4.1.5 | **Model** | 12d | 2011-04-07 | 2011-04-22 |  |  |  | 27.44d | 0d |  | 93h |  |
| 179 | 3.4.1.5.1 | Finalize Model changes v. MRAP Process workflow | 5d | 2011-04-07 | 2011-04-13 | 177 |  |  | 27.44d | 0d | Nadia Boumaza | 40h |  |
| 180 | 3.4.1.5.2 | Review: Final Model changes | 1d | 2011-04-14 | 2011-04-14 | 179 |  |  | 27.44d | 0d | Nadia Boumaza [38%]; Chris Duffy [38%]; Mike Peter [38%] | 6.5h |  |
| 181 | 3.4.1.5.3 | Finalize POJOs/CRUD/Schema - Model changes | 5d | 2011-04-15 | 2011-04-21 | 180 |  |  | 27.44d | 0d | Nadia Boumaza | 40h |  |
| 182 | 3.4.1.5.4 | Review: POJOs/CRUD/Schema update - Model changes | 1d | 2011-04-22 | 2011-04-22 | 181 |  |  | 27.44d |  | Nadia Boumaza [38%]; Chris Duffy [38%]; Mike Peter [38%] | 6.5h |  |
| 183 | 3.4.1.6 | **Agents** | 45.33d | 2011-04-25 | 2011-06-27 |  |  |  | 27.44d |  |  | 219h |  |
| 184 | 3.4.1.6.1 | Update Planner Agent to new Model | 10d | 2011-04-25 | 2011-05-06 | 178 |  |  | 27.44d | 0d | Nadia Boumaza [50%]; Mike Peter [5%] | 44h |  |
| 185 | 3.4.1.6.2 | Update JSM Agent to new Model | 10d | 2011-05-09 | 2011-05-20 | 184 |  |  | 27.44d | 0d | Nadia Boumaza [50%]; Mike Peter [5%] | 44h |  |
| 186 | 3.4.1.6.3 | Update ShiftManager Agent to new Model | 10d | 2011-05-23 | 2011-06-03 | 185 |  |  | 27.44d | 0d | Nadia Boumaza [50%]; Mike Peter [5%] | 44h |  |
| 187 | 3.4.1.6.4 | Review: Agent Object update | 0.33d | 2011-06-06 | 2011-06-06 | 186 |  |  | 27.44d | 0d | Nadia Boumaza [37.5%]; Chris Duffy [37.5%]; Mike Peter [37.5%] | 3h |  |
| 188 | 3.4.1.6.5 | Update Planner Agent Logic | 15d | 2011-06-06 | 2011-06-27 | 187 |  |  | 27.44d |  | Mike Peter [70%] | 84h |  |

| ID | WBS | Task | Duration | Start | Finish | Predecessors | Complete | Remaining | Total slack | Free slack | Resources | Work | Actual work |
| --- | --- | --- | --- | --- | --- | --- | --- | --- | --- | --- | --- | --- | --- |
| 189 | 3.4.2 | **Scheduler Enhancement Development** | 105.71d | 2011-03-08 A | 2011-08-02 |  | 45% | 58.2d | 0.78d | 0d |  | 559.2h | 219.6h |
| 190 | 3.4.2.1 | **Test Lab** | 29.71d | 2011-03-08 A | 2011-04-18 A |  | 100% |  |  |  |  | 147.6h | 147.6h |
| 191 | 3.4.2.1.1 | Algorithm Library | 4h | 2011-03-08 A | 2011-03-08 A | 126 | 100% |  |  |  | Ken Levine [40%] | 1.6h | 1.6h |
| 192 | 3.4.2.1.2 | Data Sets | 24h | 2011-03-08 A | 2011-03-11 A | 191 | 100% |  |  |  | Ken Levine [40%] | 9.6h | 9.6h |
| 193 | 3.4.2.1.3 | Logging | 5h | 2011-03-11 A | 2011-03-14 A | 192 | 100% |  |  |  | Ken Levine [40%] | 2h | 2h |
| 194 | 3.4.2.1.4 | **Test Lab Scheduler** | 17d | 2011-03-14 A | 2011-04-06 A |  | 100% |  |  |  |  | 54.4h | 54.4h |
| 195 | 3.4.2.1.4.1 | Wrapper for Scheduler | 8d | 2011-03-14 A | 2011-03-24 A | 193 | 100% |  |  |  | Ken Levine [40%] | 25.6h | 25.6h |
| 196 | 3.4.2.1.4.2 | Results Schema | 1d | 2011-03-24 A | 2011-03-25 A | 195 | 100% |  |  |  | Ken Levine [40%] | 3.2h | 3.2h |
| 197 | 3.4.2.1.4.3 | Test Lab Data Sets processing | 8d | 2011-03-25 A | 2011-04-06 A | 196 | 100% |  |  |  | Ken Levine [40%] | 25.6h | 25.6h |
| 198 | 3.4.2.1.5 | **Test Lab Data** | 25d | 2011-03-15 A | 2011-04-18 A |  | 100% |  |  |  |  | 80h | 80h |
| 199 | 3.4.2.1.5.1 | Test Lab Data Set Creation | 25d | 2011-03-15 A | 2011-04-18 A | 132 | 100% |  |  |  | Ken Levine [40%] | 80h | 80h |
| 200 | 3.4.2.2 | **Scheduler Core** | 101d | 2011-03-15 A | 2011-08-02 |  | 20% | 81d | 0.78d |  |  | 411.6h | 72h |
| 201 | 3.4.2.2.1 | Initial coding - Scheduler Core framework | 40d | 2011-03-15 A | 2011-05-09 | 132 | 50% | 20d | 0.78d | 0d | Ken Levine [45%] | 144h | 72h |
| 202 | 3.4.2.2.2 | Data model - incl. tasks/resources pt 1 | 18d | 2011-05-10 | 2011-06-02 | 201 |  |  | 0.78d | 0d | Ken Levine [45%] | 64.8h |  |
| 203 | 3.4.2.2.3 | Data model - incl. tasks/resources pt 2 | 18d | 2011-06-03 | 2011-06-28 | 202 |  |  | 0.78d | 0d | Ken Levine [45%] | 64.8h |  |
| 204 | 3.4.2.2.4 | Scheduler Core Objectives/Constraints | 10d | 2011-06-29 | 2011-07-12 | 203 |  |  | 0.78d | 0d | Ken Levine [85%] | 68h |  |
| 205 | 3.4.2.2.5 | Scheduler Core Optimization | 5d | 2011-07-20 | 2011-07-26 | 207 |  |  | 0.78d | 0d | Ken Levine [45%] | 18h |  |
| 206 | 3.4.2.2.6 | **Scheduler Core Search** | 15d | 2011-07-13 | 2011-08-02 |  |  |  | 0.78d |  |  | 52h |  |
| 207 | 3.4.2.2.6.1 | Scheduler Core Search algorithm | 5d | 2011-07-13 | 2011-07-19 | 204 |  |  | 0.78d | 0d | Ken Levine [85%] | 34h |  |
| 208 | 3.4.2.2.6.2 | Scheduler Core Search Optimization | 5d | 2011-07-27 | 2011-08-02 | 205 |  |  | 0.78d |  | Ken Levine [45%] | 18h |  |
| 209 | 3.4.3 | **Marine-Tailored UI Development** | 48d | 2011-05-02 | 2011-07-07 |  |  |  | 18.93d |  |  | 528h |  |
| 210 | 3.4.3.1 | MUI Dev: Planning/Admin Screens | 10d | 2011-05-02 | 2011-05-16 | 140 |  |  | 18.93d | 0d | Programmer 2; Steve Francis [20%] | 96h |  |
| 211 | 3.4.3.2 | MUI Dev: Planning/Admin Logic | 10d | 2011-05-16 | 2011-05-30 | 210 |  |  | 18.93d | 0d | Programmer 2; Steve Francis [20%] | 96h |  |
| 212 | 3.4.3.3 | Review: MUI Dev: Planning/Admin | 1d | 2011-05-30 | 2011-05-31 | 211 |  |  | 18.93d | 0d | Phil McKenzie; Steve Francis; Beth Giurelli | 24h |  |
| 213 | 3.4.3.4 | Revise: MUI Dev: Planning/Admin | 3d | 2011-05-31 | 2011-06-03 | 212 |  |  | 18.93d | 0d | Steve Francis; Programmer 2 | 48h |  |
| 214 | 3.4.3.5 | MUI Dev: Scheduling/Admin Screens | 10d | 2011-06-03 | 2011-06-17 | 213 |  |  | 18.93d | 0d | Programmer 2; Steve Francis [20%] | 96h |  |
| 215 | 3.4.3.6 | MUI Dev: Scheduling/Admin Logic | 10d | 2011-06-17 | 2011-07-01 | 214 |  |  | 18.93d | 0d | Programmer 2; Steve Francis [20%] | 96h |  |
| 216 | 3.4.3.7 | Review: MUI Dev: Scheduling/Admin | 1d | 2011-07-01 | 2011-07-04 | 215 |  |  | 18.93d | 0d | Phil McKenzie; Steve Francis; Beth Giurelli | 24h |  |
| 217 | 3.4.3.8 | Revise: MUI Dev: Scheduling/Admin | 3d | 2011-07-04 | 2011-07-07 | 216 |  |  | 18.93d |  | Steve Francis; Programmer 2 | 48h |  |

| ID | WBS | Task | Type | Duration | Start | Finish | Predecessors | Complete | Remaining | Total slack | Free slack | Constraint | Resources | Work | Actual work |
| --- | --- | --- | --- | --- | --- | --- | --- | --- | --- | --- | --- | --- | --- | --- | --- |
| 218 | 3.4.4 | **Reports Development** |  | 38.75d | 2011-04-11 | 2011-06-02 |  |  |  | 44.03d |  |  |  | 482h |  |
| 219 | 3.4.4.1 | Dashboard installation |  | 50h | 2011-04-11 | 2011-04-19 | 155 |  |  | 44.03d | 0d |  | Chris Duffy [40%]; Programmer 2 | 40h |  |
| 220 | 3.4.4.2 | Supervisor Reports |  | 80h | 2011-04-19 | 2011-05-03 | 219 |  |  | 44.03d | 0d |  | Chris Duffy [70%]; Programmer 2 | 136h |  |
| 221 | 3.4.4.3 | Administrative Reports |  | 80h | 2011-05-03 | 2011-05-17 | 220 |  |  | 44.03d | 0d |  | Chris Duffy [70%]; Programmer 2 | 136h |  |
| 222 | 3.4.4.4 | Custom Reports (5 reports, 20hr per report) |  | 100h | 2011-05-17 | 2011-06-02 | 221 |  |  | 44.03d |  |  | Chris Duffy [70%]; Programmer 2 | 170h |  |
| 223 | 3.5 | **Task 5 - System Testing** |  | 254.22d | 2010-09-24 A | 2011-09-15 |  | 71% | 72.98d | 0.78d |  |  |  | 2414.58h | 1540.98h |
| 224 | 3.5.1 | **System Test Plan Documentation** |  | 90d | 2010-10-20 A | 2011-02-23 A |  | 100% |  |  |  |  |  | 456h | 456h |
| 225 | 3.5.1.1 | Develop System Test Plan |  | 72d | 2010-10-20 A | 2011-01-28 A |  | 100% |  |  |  |  | Sean Williams [40%]; Chris Duffy [20%] | 345.6h | 345.6h |
| 226 | 3.5.1.2 | MLC Review: System Test Plan |  | 3d | 2011-01-28 A | 2011-02-02 A | 225 | 100% |  |  |  |  | Ken Levine [10%]; Nadia Boumaza [10%]; Chris Duffy [10%]; Mike Peter [10%] | 9.6h | 9.6h |
| 227 | 3.5.1.3 | Revise: System Test Plan |  | 3d | 2011-02-02 A | 2011-02-07 A | 226 | 100% |  |  |  |  | Sean Williams [40%]; Chris Duffy [20%] | 14.4h | 14.4h |
| 228 | 3.5.1.4 | Sonalysts Review of System Test Plan |  | 10d | 2011-02-07 A | 2011-02-21 A | 227 | 100% |  |  |  |  | Beth Giurelli | 80h | 80h |
| 229 | 3.5.1.5 | MLC Updates - Test Plan |  | 2d | 2011-02-21 A | 2011-02-23 A | 228 | 100% |  |  |  |  | Sean Williams [40%] | 6.4h | 6.4h |
| 230 | 3.5.1.6 | Deliverable: Submit Final System Test Plan | milestone | 0d | 2011-02-23 A | 2011-02-23 A | 229 | 100% |  |  |  |  |  |  |  |
| 231 | 3.5.2 | **Test Framework Setup** |  | 123d | 2010-09-24 A | 2011-03-15 A |  | 100% |  |  |  |  |  | 489.78h | 489.78h |
| 232 | 3.5.2.1 | **Automated Regression Testing Framework** |  | 123d | 2010-09-24 A | 2011-03-15 A |  | 100% |  |  |  |  |  | 489.78h | 489.78h |
| 233 | 3.5.2.1.1 | ARTF: Common Library |  | 20d | 2010-09-24 A | 2010-10-25 A | 2 | 100% |  |  |  |  | Chris Duffy [70%] | 104.6h | 104.6h |
| 234 | 3.5.2.1.2 | ARTF: Execution Monitor |  | 18d | 2010-10-26 A | 2010-11-18 A | 233 | 100% |  |  |  |  | Chris Duffy [85%] | 115.87h | 115.87h |
| 235 | 3.5.2.1.3 | ARTF: Screen invocation functions |  | 16d | 2010-11-19 A | 2010-12-10 A | 234 | 100% |  |  |  |  | Chris Duffy [85%] | 86.83h | 86.83h |
| 236 | 3.5.2.1.4 | ARTF: Screen navigation functions |  | 30d | 2010-12-13 A | 2011-01-21 A | 235 | 100% |  |  |  |  | Chris Duffy [40%] | 91.09h | 91.09h |
| 237 | 3.5.2.1.5 | ARTF: Screen action functions |  | 25d | 2011-01-24 A | 2011-02-25 A | 236 | 100% |  |  |  |  | Chris Duffy [50%] | 83.04h | 83.04h |
| 238 | 3.5.2.1.6 | ARTF: Build integration |  | 5d | 2011-03-09 A | 2011-03-15 A | 237 | 100% |  |  |  | start no earlier than 2011-03-09 | Chris Duffy [26.5%] | 8.36h | 8.36h |
| 239 | 3.5.3 | **Test Case Preparation** |  | 149.46d | 2010-10-20 A | 2011-05-17 |  | 68% | 48.38d | 87.04d |  |  |  | 451.8h | 240h |
| 240 | 3.5.3.1 | **Regression Suite Test Cases** |  | 65d | 2010-10-20 A | 2011-01-19 A |  | 100% |  |  |  |  |  | 240h | 240h |
| 241 | 3.5.3.1.1 | RSTC: Section "Define" Test Cases |  | 25d | 2010-10-20 A | 2010-11-24 A |  | 100% |  |  |  |  | Sean Williams [40%] | 80h | 80h |
| 242 | 3.5.3.1.2 | RSTC: Section "Implement" Test Cases |  | 20d | 2010-11-24 A | 2010-12-22 A | 241 | 100% |  |  |  |  | Sean Williams [50%] | 80h | 80h |
| 243 | 3.5.3.1.3 | RSTC: Section "Control" Test Cases |  | 20d | 2010-12-22 A | 2011-01-19 A | 242 | 100% |  |  |  |  | Sean Williams [50%] | 80h | 80h |
| 244 | 3.5.3.1.4 | Internal Deliverable: Regression Suite Test Cases | milestone | 0d | 2011-01-19 A | 2011-01-19 A | 243 | 100% |  |  |  |  |  |  |  |

| ID | WBS | Task | Type | Duration | Start | Finish | Predecessors | Complete | Remaining | Total slack | Free slack | Resources | Work | Actual work |
| --- | --- | --- | --- | --- | --- | --- | --- | --- | --- | --- | --- | --- | --- | --- |
| 245 | 3.5.3.2 | **MRAP-Tailored UI Test Cases** |  | 11.11d | 2011-05-02 | 2011-05-17 |  |  |  | 45.82d | 0d |  | 73.6h |  |
| 246 | 3.5.3.2.1 | MRAP-Tailored Supervisor Screens Test Cases |  | 5.56d | 2011-05-02 | 2011-05-10 | 140 |  |  | 45.82d | 0d | Sean Williams [90%] | 37.6h |  |
| 247 | 3.5.3.2.2 | MRAP-Tailored Personnel ScreensTest Cases |  | 5.56d | 2011-05-10 | 2011-05-17 | 246 |  |  | 45.82d | 0d | Sean Williams [90%] | 36h |  |
| 248 | 3.5.3.2.3 | Internal Deliverable: MRAP-Tailored UI Test Cases | milestone | 0d | 2011-05-17 | 2011-05-17 | 247 |  |  | 45.82d |  |  |  |  |
| 249 | 3.5.3.3 | **Reports Test Cases** |  | 20d | 2011-04-13 | 2011-05-10 |  |  |  | 92d |  |  | 138.2h |  |
| 250 | 3.5.3.3.1 | Supervisor Reports Test Cases |  | 5d | 2011-04-13 | 2011-04-19 | 153 |  |  | 92d | 0d | Sean Williams [90%] | 36h |  |
| 251 | 3.5.3.3.2 | Administrative Reports Test Cases |  | 5d | 2011-04-20 | 2011-04-26 | 250 |  |  | 92d | 0d | Sean Williams [90%] | 32.6h |  |
| 252 | 3.5.3.3.3 | Custom Reports Test Cases (5 reports) |  | 10d | 2011-04-27 | 2011-05-10 | 251 |  |  | 92d | 0d | Sean Williams [90%] | 69.6h |  |
| 253 | 3.5.3.3.4 | Internal Deliverable: Reports Test Cases | milestone | 0d | 2011-05-10 | 2011-05-10 | 252 |  |  | 92d |  |  |  |  |
| 254 | 3.5.4 | **Test Script Preparation** |  | 161.96d | 2010-10-18 A | 2011-05-31 |  | 67% | 53.99d | 45.82d | 45.04d |  | 535.2h | 355.2h |
| 255 | 3.5.4.1 | **Regression Suite Scripts** |  | 50d | 2011-01-19 A | 2011-03-30 A |  | 100% |  |  |  |  | 355.2h | 355.2h |
| 256 | 3.5.4.1.1 | Section "Define" Test Scripts |  | 20d | 2011-01-19 A | 2011-02-16 A | 240 | 100% |  |  |  | Sean Williams [90%] | 139.2h | 139.2h |
| 257 | 3.5.4.1.2 | Section "Implement" Test Scripts |  | 15d | 2011-02-16 A | 2011-03-09 A | 256 | 100% |  |  |  | Sean Williams [90%] | 108h | 108h |
| 258 | 3.5.4.1.3 | Section "Control" Test Scripts |  | 15d | 2011-03-09 A | 2011-03-30 A | 257 | 100% |  |  |  | Sean Williams [90%] | 108h | 108h |
| 259 | 3.5.4.1.4 | Internal Deliverable: Regression Test Scripts | milestone | 0d | 2011-03-30 A | 2011-03-30 A | 258 | 100% |  |  |  |  |  |  |
| 260 | 3.5.4.2 | **Marine-Tailored UI Test Scripts** |  | 10d | 2011-05-17 | 2011-05-31 |  |  |  | 45.82d |  |  | 72h |  |
| 261 | 3.5.4.2.1 | Marine-Tailored Supervisor ScreensTest Scripts |  | 5d | 2011-05-17 | 2011-05-24 | 245 |  |  | 45.82d | 0d | Sean Williams [90%] | 36h |  |
| 262 | 3.5.4.2.2 | Marine-Tailored Worker ScreensTest Scripts |  | 5d | 2011-05-24 | 2011-05-31 | 261 |  |  | 45.82d | 0d | Sean Williams [90%] | 36h |  |
| 263 | 3.5.4.2.3 | Internal Deliverable: MRAP-Tailored UI Test Scripts | milestone | 0d | 2011-05-31 | 2011-05-31 | 262 |  |  | 45.82d |  |  |  |  |
| 264 | 3.5.4.3 | **Reports Test Scripts** |  | 15d | 2010-10-18 | 2010-11-05 |  |  |  | 192.78d |  |  | 108h |  |
| 265 | 3.5.4.3.1 | Supervisor Reports Test Scripts |  | 5d | 2010-10-18 | 2010-10-22 |  |  |  | 192.78d | 0d | Sean Williams [90%] | 36h |  |
| 266 | 3.5.4.3.2 | Administrative Reports Test Scripts |  | 5d | 2010-10-25 | 2010-10-29 | 265 |  |  | 192.78d | 0d | Sean Williams [90%] | 36h |  |
| 267 | 3.5.4.3.3 | Custom Reports Test Scripts (5 reports) |  | 5d | 2010-11-01 | 2010-11-05 | 266 |  |  | 192.78d | 0d | Sean Williams [90%] | 36h |  |
| 268 | 3.5.4.3.4 | Internal Deliverable: Reports Test Scripts | milestone | 0d | 2010-11-05 | 2010-11-05 | 267 |  |  | 192.78d |  |  |  |  |
| 269 | 3.5.4.4 | Internal Deliverable: Final Test Scripts | milestone | 0d | 2010-10-18 | 2010-10-18 |  |  |  | 207.78d |  |  |  |  |

| ID | WBS | Task | Type | Duration | Start | Finish | Predecessors | Total slack | Free slack | Resources | Work |
| --- | --- | --- | --- | --- | --- | --- | --- | --- | --- | --- | --- |
| 270 | 3.5.5 | **Perform Scheduler Testing** |  | 10d | 2011-08-03 | 2011-08-16 |  | 11d | 10.22d |  | 92h |
| 271 | 3.5.5.1 | Test execution and run analysis pt 1 |  | 5d | 2011-08-03 | 2011-08-09 | 189 | 11d | 0d | Ken Levine [90%] | 36h |
| 272 | 3.5.5.2 | Test support |  | 5d | 2011-08-03 | 2011-08-09 | 189 | 16d |  | Mike Peter [20%] | 8h |
| 273 | 3.5.5.3 | Test execution and run analysis pt 2 |  | 5d | 2011-08-10 | 2011-08-16 | 271 | 11d |  | Ken Levine [90%] | 36h |
| 274 | 3.5.5.4 | Test support |  | 5d | 2011-08-10 | 2011-08-16 | 271 | 11d |  | Mike Peter [30%] | 12h |
| 275 | 3.5.6 | **Perform Integration Testing** |  | 2d | 2011-08-03 | 2011-08-04 |  | 0.78d | 0d |  | 11.2h |
| 276 | 3.5.6.1 | Web Services Integration (Internal) |  | 2d | 2011-08-03 | 2011-08-04 | 254, 164 | 0.78d |  | Sean Williams [90%] | 11.2h |
| 277 | 3.5.7 | **Perform System Testing** |  | 14.22d | 2011-08-03 | 2011-08-23 |  | 0.78d | 0d |  | 297h |
| 278 | 3.5.7.1 | Confirm Readiness of Application for System Testing |  | 0.83d | 2011-08-03 | 2011-08-03 | 254, 164 | 13.89d | 0d | Chris Duffy [80%]; Mike Peter [50%] | 8h |
| 279 | 3.5.7.2 | Establish System Test Defect and Resolution Log |  | 0.28d | 2011-08-03 | 2011-08-04 | 278 | 13.89d |  | Sean Williams [90%] | 1h |
| 280 | 3.5.7.3 | Perform System Testing |  | 10d | 2011-08-05 | 2011-08-18 | 275 | 0.78d | 0d | Sean Williams [90%] | 72h |
| 281 | 3.5.7.4 | Review Test Results |  | 10d | 2011-08-05 | 2011-08-18 | 275 | 3d |  | Chris Duffy [50%] | 40h |
| 282 | 3.5.7.5 | Modify Application Software as Required |  | 10d | 2011-08-05 | 2011-08-18 | 275 | 3d |  | Nadia Boumaza; Programmer 2 | 160h |
| 283 | 3.5.7.6 | Regression Test |  | 2.22d | 2011-08-19 | 2011-08-23 | 280 | 0.78d |  | Sean Williams [90%] | 16h |
| 284 | 3.5.8 | **Perform Reports Testing** |  | 6d | 2011-08-23 | 2011-08-31 |  | 0.78d | 0d |  | 38.4h |
| 285 | 3.5.8.1 | Supervisor Reports |  | 2d | 2011-08-23 | 2011-08-25 | 277 | 0.78d | 0d | Chris Duffy [80%] | 12.8h |
| 286 | 3.5.8.2 | Administrative Reports |  | 2d | 2011-08-25 | 2011-08-29 | 285 | 0.78d | 0d | Chris Duffy [80%] | 12.8h |
| 287 | 3.5.8.3 | Custom Reports |  | 2d | 2011-08-29 | 2011-08-31 | 286 | 0.78d |  | Chris Duffy [80%] | 12.8h |
| 288 | 3.5.9 | **System Test Results Documentation** |  | 11d | 2011-08-31 | 2011-09-15 |  | 0.78d |  |  | 43.2h |
| 289 | 3.5.9.1 | Develop System Test Results Document |  | 5d | 2011-08-31 | 2011-09-07 | 284, 270 | 0.78d | 0d | Sean Williams [90%] | 36h |
| 290 | 3.5.9.2 | Sonalysts Review of System Test Results Document |  | 5d | 2011-09-07 | 2011-09-14 | 289 | 0.78d | 0d |  |  |
| 291 | 3.5.9.3 | MLC Updates to Test Results Document |  | 1d | 2011-09-14 | 2011-09-15 | 290 | 0.78d | 0d | Sean Williams [90%] | 7.2h |
| 292 | 3.5.9.4 | Deliverable: Submit Final System Test Results Document | milestone | 0d | 2011-09-15 | 2011-09-15 | 291 | 0.78d |  |  |  |
